# ATLAS Radar System Development

How a schedule from MS Project XML changed from version to version. A marks actual dates.

## Version 1 (saved 2026-04-28, file IMS_2026-04-28_1208z.xml)

Note of the change: chore: clean up test procedures and commit Teams manifest + IMS master seed

| ID | Task | Duration | Start | Finish | Predecessors | Complete |
| --- | --- | --- | --- | --- | --- | --- |
| 1 | ATLAS Radar System Development | 0h | 2026-01-05 | 2026-12-18 |  | 32% |
| 2 | SE-01 System Requirements Review (SRR) | 240h | 2026-01-05 | 2026-02-13 |  | 100% |
| 3 | SE-02 System Design Document | 320h | 2026-02-16 | 2026-04-03 | 2 | 85% |
| 4 | SE-03 Interface Control Documents (ICDs) | 240h | 2026-03-02 | 2026-04-17 | 2 | 60% |
| 5 | SE-04 CONOPS Development | 160h | 2026-02-16 | 2026-03-20 | 2 |  |
| 6 | SE-05 Requirements Traceability Matrix | 240h | 2026-03-23 | 2026-05-01 | 4 | 40% |
| 7 | SE-06 Preliminary Design Review (PDR) Package | 240h | 2026-04-20 | 2026-05-29 | 3, 6 | 10% |
| 8 | SE-07 System Safety Analysis | 480h | 2026-04-06 | 2026-06-12 | 4 | 5% |
| 9 | SE-08 Reliability Analysis | 0h | 2026-04-06 | 2026-05-15 | 4 |  |
| 10 | SE-09 Critical Design Review (CDR) Package | 240h | 2026-07-06 | 2026-08-14 | 7 |  |
| 11 | SE-10 Verification & Validation Plan | 240h | 2026-06-01 | 2026-07-10 | 7 |  |
| 12 | HW-01 RF Front End Design | 320h | 2026-02-16 | 2026-04-17 | 4 | 75% |
| 13 | HW-02 Signal Processing Board Design | 320h | 2026-02-16 | 2026-04-24 | 4 | 55% |
| 14 | HW-03 Power Supply Design | 200h | 2026-02-16 | 2026-03-27 | 4 |  |
| 15 | HW-04 Antenna Array Design | 400h | 2026-03-02 | 2026-05-08 | 4 | 45% |
| 16 | HW-05 RF Front End Prototype Fabrication | 320h | 2026-04-20 | 2026-06-05 | 12 |  |
| 17 | HW-06 Signal Processing Board Fabrication | 320h | 2026-04-27 | 2026-06-19 | 13 |  |
| 18 | HW-07 Antenna Array Fabrication | 480h | 2026-05-11 | 2026-07-17 | 15 |  |
| 19 | HW-08 Hardware Unit Testing | 320h | 2026-06-22 | 2026-08-07 | 16, 17 |  |
| 20 | HW-09 Environmental Stress Screening | 200h | 2026-08-10 | 2026-09-04 | 19 |  |
| 21 | HW-10 Hardware Acceptance Test | 200h | 2026-09-07 | 2026-10-02 | 20, 18 |  |
| 22 | SW-01 Software Requirements Specification | 200h | 2026-02-16 | 2026-03-27 | 4 | 100% |
| 23 | SW-02 Software Architecture Design | 240h | 2026-03-30 | 2026-05-08 | 22 | 78% |
| 24 | SW-03 Signal Processing Algorithm Development | 480h | 2026-04-06 | 2026-06-19 | 23 | 38% |
| 25 | SW-04 Tracking Algorithm Development | 480h | 2026-04-06 | 2026-06-26 | 23 | 25% |
| 26 | SW-05 User Interface Development | 400h | 2026-05-11 | 2026-07-10 | 23 |  |
| 27 | SW-06 Database Design and Implementation | 240h | 2026-04-20 | 2026-05-29 | 23 | 17% |
| 28 | SW-07 Software Unit Testing | 240h | 2026-06-22 | 2026-07-31 | 24, 25, 27 |  |
| 29 | SW-08 Software Integration Testing | 240h | 2026-08-03 | 2026-09-04 | 28, 26 |  |
| 30 | SW-09 Software Qualification Testing | 240h | 2026-09-07 | 2026-10-16 | 29 |  |
| 31 | SW-10 Software Documentation Complete | 200h | 2026-09-07 | 2026-10-02 | 29 |  |
| 32 | IT-01 Integration Test Plan | 240h | 2026-06-01 | 2026-07-10 | 11 |  |
| 33 | IT-02 Lab Setup and Calibration | 200h | 2026-07-13 | 2026-08-07 | 32 |  |
| 34 | IT-03 Hardware-Software Integration | 240h | 2026-10-05 | 2026-11-06 | 21, 30, 33 |  |
| 35 | IT-04 System Functional Testing | 120h | 2026-11-09 | 2026-11-27 | 34 |  |
| 36 | IT-05 System Performance Testing | 160h | 2026-11-09 | 2026-12-04 | 34 |  |
| 37 | IT-06 Environmental Testing | 80h | 2026-11-30 | 2026-12-11 | 35, 36 |  |
| 38 | IT-07 Regression Testing | 40h | 2026-12-07 | 2026-12-11 | 37 |  |
| 39 | IT-08 Test Readiness Review | 80h | 2026-09-14 | 2026-09-25 | 10, 33 |  |
| 40 | IT-09 Acceptance Test Procedure Development | 200h | 2026-08-17 | 2026-09-11 | 32 |  |
| 41 | IT-10 System Acceptance Test | 40h | 2026-12-14 | 2026-12-18 | 38, 40 |  |
| 42 | PM-01 Program Management Plan | 200h | 2026-01-05 | 2026-02-06 |  | 100% |
| 43 | PM-02 Risk Management Plan | 120h | 2026-01-05 | 2026-01-23 |  | 100% |
| 44 | PM-03 Monthly Status Reports | 1600h | 2026-02-02 | 2026-12-04 | 42 | 28% |
| 45 | PM-04 Earned Value Management Reporting | 1600h | 2026-02-02 | 2026-12-04 | 42 | 28% |
| 46 | PM-05 IMS Baseline Maintenance | 1760h | 2026-01-26 | 2026-12-04 |  | 30% |
| 47 | PM-06 Subcontractor Management | 1360h | 2026-02-16 | 2026-10-16 |  | 25% |
| 48 | PM-07 Configuration Management | 1680h | 2026-02-02 | 2026-12-04 |  | 30% |
| 49 | PM-08 Quality Assurance | 1680h | 2026-02-02 | 2026-12-04 |  | 30% |
| 50 | PM-09 Customer Coordination Meetings | 1840h | 2026-01-12 | 2026-12-04 |  | 30% |
| 51 | PM-10 Data Management | 1840h | 2026-01-12 | 2026-12-04 |  | 30% |
| 52 | MS-01 System Requirements Review (SRR) Complete | 0h | 2026-02-13 | 2026-02-13 | 2 | 100% |
| 53 | MS-02 Preliminary Design Review (PDR) Complete | 0h | 2026-05-29 | 2026-05-29 | 7 |  |
| 54 | MS-03 Critical Design Review (CDR) Complete | 0h | 2026-08-14 | 2026-08-14 | 10 |  |
| 55 | MS-04 Test Readiness Review (TRR) Complete | 0h | 2026-09-25 | 2026-09-25 | 39 |  |
| 56 | MS-05 Hardware-Software Integration Complete | 0h | 2026-11-06 | 2026-11-06 | 34 |  |
| 57 | MS-06 System Acceptance Test (SAT) Complete | 0h | 2026-12-18 | 2026-12-18 | 41 |  |
| 58 | MS-07 Program Complete / Delivery | 0h | 2026-12-18 | 2026-12-18 | 57 |  |

## Version 2 (saved 2026-04-29, file IMS_2026-04-29_0000z.mpp)

Note of the change: feat(sprint4): full test-procedure execution, 10 bug fixes, and startup tooling

Last finish stays 2026-12-18. Complete tasks 5 → 1.

Removed: 1 ATLAS Radar System Development

Changed:

| ID | Task | Start | Finish | Duration | Complete | Total float |
| --- | --- | --- | --- | --- | --- | --- |
| 1 | SE-01 System Requirements Review (SRR) | 2026-01-05 A |  |  | 100% → 99% | none → 0d |
| 2 | SE-02 System Design Document | 2026-02-16 → 2026-03-02 (+14d) | 2026-04-03 → 2026-04-17 (+14d) | 320h → 280h | 85% → 0% | none → 0d |
| 3 | SE-03 Interface Control Documents (ICDs) | 2026-03-02 → 2025-12-15 (-77d) | 2026-04-17 → 2026-01-30 (-77d) | 240h → 280h | 60% → 0% | none → 0d |
| 4 | SE-04 CONOPS Development | 2026-02-16 → 2026-11-16 (+273d) | 2026-03-20 → 2026-12-18 (+273d) | 160h → 200h |  | none → 0d |
| 5 | SE-05 Requirements Traceability Matrix | 2026-03-23 → 2026-03-09 (-14d) | 2026-05-01 → 2026-04-17 (-14d) |  | 40% → 0% | none → 0d |
| 6 | SE-06 Preliminary Design Review (PDR) Package |  |  |  | 10% → 0% | none → 0d |
| 7 | SE-07 System Safety Analysis | 2026-04-06 → 2026-10-12 (+189d) | 2026-06-12 → 2026-12-18 (+189d) | 480h → 400h | 5% → 0% | none → 0d |
| 8 | SE-08 Reliability Analysis | 2026-04-06 → 2026-11-09 (+217d) | 2026-05-15 → 2026-12-18 (+217d) | 0h → 240h |  | none → 0d |
| 9 | SE-09 Critical Design Review (CDR) Package | 2026-07-06 → 2026-10-26 (+112d) | 2026-08-14 → 2026-12-04 (+112d) |  |  | none → 0d |
| 11 | HW-01 RF Front End Design |  |  | 320h → 360h | 75% → 0% | none → 0d |
| 12 | HW-02 Signal Processing Board Design | 2026-02-16 → 2026-02-02 (-14d) | 2026-04-24 → 2026-04-10 (-14d) | 320h → 400h | 55% → 0% | none → 0d |
| 13 | HW-03 Power Supply Design | 2026-02-16 → 2026-11-09 (+266d) | 2026-03-27 → 2026-12-18 (+266d) | 200h → 240h |  | none → 0d |
| 14 | HW-04 Antenna Array Design | 2026-03-02 → 2026-04-06 (+35d) | 2026-05-08 → 2026-06-12 (+35d) |  | 45% → 0% | none → 0d |
| 15 | HW-05 RF Front End Prototype Fabrication |  |  | 320h → 280h |  | none → 0d |
| 16 | HW-06 Signal Processing Board Fabrication | 2026-04-27 → 2026-04-13 (-14d) | 2026-06-19 → 2026-06-05 (-14d) |  |  | none → 0d |
| 17 | HW-07 Antenna Array Fabrication | 2026-05-11 → 2026-06-15 (+35d) | 2026-07-17 → 2026-08-21 (+35d) | 480h → 400h |  | none → 0d |
| 18 | HW-08 Hardware Unit Testing | 2026-06-22 → 2026-06-08 (-14d) | 2026-08-07 → 2026-07-24 (-14d) | 320h → 280h |  | none → 0d |
| 19 | HW-09 Environmental Stress Screening | 2026-08-10 → 2026-07-27 (-14d) | 2026-09-04 → 2026-08-21 (-14d) | 200h → 160h |  | none → 0d |
| 20 | HW-10 Hardware Acceptance Test | 2026-09-07 → 2026-08-24 (-14d) | 2026-10-02 → 2026-09-18 (-14d) | 200h → 160h |  | none → 0d |
| 21 | SW-01 Software Requirements Specification | 2026-02-16 A |  | 200h → 240h | 100% → 99% | none → 0d |
| 22 | SW-02 Software Architecture Design | 2026-03-30 → 2026-01-19 (-70d) | 2026-05-08 → 2026-02-27 (-70d) |  | 78% → 0% | none → 0d |
| 23 | SW-03 Signal Processing Algorithm Development | 2026-04-06 → 2026-03-09 (-28d) | 2026-06-19 → 2026-05-22 (-28d) | 480h → 440h | 38% → 0% | none → 0d |
| 24 | SW-04 Tracking Algorithm Development | 2026-04-06 → 2026-03-02 (-35d) | 2026-06-26 → 2026-05-22 (-35d) |  | 25% → 0% | none → 0d |
| 25 | SW-05 User Interface Development | 2026-05-11 → 2026-05-04 (-7d) | 2026-07-10 → 2026-07-03 (-7d) | 400h → 360h |  | none → 0d |
| 26 | SW-06 Database Design and Implementation | 2026-04-20 → 2026-04-13 (-7d) | 2026-05-29 → 2026-05-22 (-7d) |  | 17% → 0% | none → 0d |
| 27 | SW-07 Software Unit Testing | 2026-06-22 → 2026-05-25 (-28d) | 2026-07-31 → 2026-07-03 (-28d) |  |  | none → 0d |
| 28 | SW-08 Software Integration Testing | 2026-08-03 → 2026-07-06 (-28d) | 2026-09-04 → 2026-08-07 (-28d) | 240h → 200h |  | none → 0d |
| 29 | SW-09 Software Qualification Testing | 2026-09-07 → 2026-08-10 (-28d) | 2026-10-16 → 2026-09-18 (-28d) |  |  | none → 0d |
| 30 | SW-10 Software Documentation Complete | 2026-09-07 → 2026-11-23 (+77d) | 2026-10-02 → 2026-12-18 (+77d) | 200h → 160h |  | none → 0d |
| 31 | IT-01 Integration Test Plan | 2026-06-01 → 2026-07-13 (+42d) | 2026-07-10 → 2026-08-21 (+42d) |  |  | none → 0d |
| 32 | IT-02 Lab Setup and Calibration | 2026-07-13 → 2026-08-24 (+42d) | 2026-08-07 → 2026-09-18 (+42d) | 200h → 160h |  | none → 0d |
| 33 | IT-03 Hardware-Software Integration | 2026-10-05 → 2026-09-21 (-14d) | 2026-11-06 → 2026-10-23 (-14d) | 240h → 200h |  | none → 0d |
| 34 | IT-04 System Functional Testing | 2026-11-09 → 2026-11-02 (-7d) | 2026-11-27 → 2026-11-20 (-7d) |  |  | none → 0d |
| 35 | IT-05 System Performance Testing | 2026-11-09 → 2026-10-26 (-14d) | 2026-12-04 → 2026-11-20 (-14d) |  |  | none → 0d |
| 36 | IT-06 Environmental Testing | 2026-11-30 → 2026-11-23 (-7d) | 2026-12-11 → 2026-12-04 (-7d) |  |  | none → 0d |
| 38 | IT-08 Test Readiness Review | 2026-09-14 → 2026-12-07 (+84d) | 2026-09-25 → 2026-12-18 (+84d) |  |  | none → 0d |
| 39 | IT-09 Acceptance Test Procedure Development | 2026-08-17 → 2026-11-16 (+91d) | 2026-09-11 → 2026-12-11 (+91d) | 200h → 160h |  | none → 0d |
| 41 | PM-01 Program Management Plan | 2026-01-05 A |  |  | 100% → 99% | none → 0d |
| 42 | PM-02 Risk Management Plan | 2026-01-05 A |  |  | 100% → 99% | none → 0d |
| 43 | PM-03 Monthly Status Reports | 2026-02-02 → 2026-02-16 (+14d) | 2026-12-04 → 2026-12-18 (+14d) | 1600h → 1760h | 28% → 0% | none → 0d |
| 44 | PM-04 Earned Value Management Reporting | 2026-02-02 → 2026-02-16 (+14d) | 2026-12-04 → 2026-12-18 (+14d) | 1600h → 1760h | 28% → 0% | none → 0d |
| 45 | PM-05 IMS Baseline Maintenance | 2026-01-26 → 2025-12-15 (-42d) | 2026-12-04 → 2026-10-23 (-42d) | 1760h → 1800h | 30% → 0% | none → 40d |
| 46 | PM-06 Subcontractor Management | 2026-02-16 → 2025-12-15 (-63d) | 2026-10-16 → 2026-08-14 (-63d) | 1360h → 1400h | 25% → 0% | none → 90d |
| 47 | PM-07 Configuration Management | 2026-02-02 → 2025-12-15 (-49d) | 2026-12-04 → 2026-10-16 (-49d) | 1680h → 1760h | 30% → 0% | none → 45d |
| 48 | PM-08 Quality Assurance | 2026-02-02 → 2025-12-15 (-49d) | 2026-12-04 → 2026-10-16 (-49d) | 1680h → 1760h | 30% → 0% | none → 45d |
| 49 | PM-09 Customer Coordination Meetings | 2026-01-12 → 2025-12-15 (-28d) | 2026-12-04 → 2026-11-06 (-28d) | 1840h → 1880h | 30% → 0% | none → 30d |
| 50 | PM-10 Data Management | 2026-01-12 → 2025-12-15 (-28d) | 2026-12-04 → 2026-11-06 (-28d) | 1840h → 1880h | 30% → 0% | none → 30d |
| 51 | MS-01 System Requirements Review (SRR) Complete | 2026-02-13 A | 2026-02-13 A |  |  |  |
| 52 | MS-02 Preliminary Design Review (PDR) Complete | 2026-05-29 → 2026-12-18 (+203d) | 2026-05-29 → 2026-12-18 (+203d) |  |  | none → 0d |
| 53 | MS-03 Critical Design Review (CDR) Complete | 2026-08-14 → 2026-12-18 (+126d) | 2026-08-14 → 2026-12-18 (+126d) |  |  | none → 0d |
| 54 | MS-04 Test Readiness Review (TRR) Complete | 2026-09-25 → 2026-12-18 (+84d) | 2026-09-25 → 2026-12-18 (+84d) |  |  | none → 0d |
| 55 | MS-05 Hardware-Software Integration Complete | 2026-11-06 → 2026-12-18 (+42d) | 2026-11-06 → 2026-12-18 (+42d) |  |  | none → 0d |
